# 0077 Net2Html5 - 070 Project Plan

Schedule from MS Project, 2016-12-19 to 2018-03-22, status date 2016-12-19, costs in $, A marks actual dates.

## Calendars

- Standard: Mon-Fri 08:00-12:00, 13:00-17:00; Sat-Sun off.

## Resources

| Resource | Rate |
| --- | --- |
| ken.netherland | 18 |
| mike.pearl | 18 |

## Schedule

| ID | WBS | Task | Duration | Start | Finish | Predecessors | Complete | Remaining | Baseline start | Baseline finish | Baseline duration | Baseline 1 start | Baseline 1 finish | Total slack | Constraint | Resources | Work | Actual work | Cost | Baseline cost | Actual cost | Work Item ID | State | Links & Attachments | Rev | Work Item Type |
| --- | --- | --- | --- | --- | --- | --- | --- | --- | --- | --- | --- | --- | --- | --- | --- | --- | --- | --- | --- | --- | --- | --- | --- | --- | --- | --- |
| 1 | 1 | **0077 Silver Lining - Project** | 329d? | 2016-12-19 08:00 A | 2018-03-22 17:00 |  | 1% | 324.13d? | 2016-12-19 08:00 | 2018-03-22 11:00 | 328.38d? |  |  | 0d |  |  | 3567h | 53h | 64,206 | 64,206 | 954 | 4566 | ܁q | Yes |  |  |
| 2 | 1.1 | **Analysis** | 328.25d | 2016-12-19 08:00 A | 2018-03-22 10:00 |  | 21% | 258.94d | 2016-12-19 08:00 | 2017-04-06 10:00 | 78.25d |  |  | 0.25d |  |  | 251h | 53h | 4,518 | 4,518 | 954 | 4567 | ܁q | Yes |  |  |
| 3 | 1.1.1 | **Analysis Task - 01. Business Model (BM)** | 3.38d | 2016-12-19 08:00 A | 2016-12-22 11:00 A |  | 100% |  | 2016-12-19 08:00 | 2016-12-22 11:00 | 3.38d | 2016-11-26 13:38 | 2016-11-28 13:38 |  |  |  | 27h | 27h | 486 | 486 | 486 | 4570 | ܁a | Yes | 10 |  |
| 4 | 1.1.1.1 | Analysis Task - 01.01 Business Model (BM) - Project Update | 0.12d | 2016-12-19 08:00 A | 2016-12-19 09:00 A |  | 100% |  | 2016-12-19 08:00 | 2016-12-19 09:00 | 0.12d | 2016-12-01 08:00 | 2016-12-05 00:00 |  | start no earlier than 2016-12-18 13:02 | ken.netherland | 1h | 1h | 18 | 18 | 18 | 4571 | ܁p | Yes | 17 |  |
| 5 | 1.1.1.2 | Analysis Task - 01.02 Business Model (BM) - Initial Stakeholder Interview | 0.25d | 2016-12-19 09:00 A | 2016-12-19 11:00 A | 4 | 100% |  | 2016-12-19 09:00 | 2016-12-19 11:00 | 0.25d | 2016-12-01 09:00 | 2016-12-05 00:00 |  | start no earlier than 2016-12-18 13:04 | ken.netherland | 2h | 2h | 36 | 36 | 36 | 4572 | ܁L | Yes | 20 |  |
| 6 | 1.1.1.3 | Analysis Task - 01.03 Business Model (BM) - Executive Summary to Business Model Diagram | 1.75d | 2016-12-19 11:00 A | 2016-12-21 09:00 A | 5 | 100% |  | 2016-12-19 11:00 | 2016-12-21 09:00 | 1.75d | 2016-12-01 11:00 | 2016-12-05 09:00 |  | start no earlier than 2016-12-18 13:04 | ken.netherland | 14h | 14h | 252 | 252 | 252 | 4573 | ܁a | Yes | 17 | ܁D |
| 7 | 1.1.1.4 | Analysis Task - 01.04 Business Model (BM) - Roles and Responsibilities | 1d | 2016-12-21 09:00 A | 2016-12-22 09:00 A | 6 | 100% |  | 2016-12-21 09:00 | 2016-12-22 09:00 | 1d | 2016-12-01 00:00 | 2016-12-05 00:00 |  | start no earlier than 2016-12-18 13:04 | ken.netherland | 8h | 8h | 144 | 144 | 144 | 4574 | ܁a | Yes | 16 |  |
| 8 | 1.1.1.5 | Analysis Task - 01.05 Business Model (BM) - Document | 0.25d | 2016-12-22 09:00 A | 2016-12-22 11:00 A | 7 | 100% |  | 2016-12-22 09:00 | 2016-12-22 11:00 | 0.25d | 2016-12-01 00:00 | 2016-12-05 00:00 |  | start no earlier than 2016-12-18 12:59 | ken.netherland | 2h | 2h | 36 | 36 | 36 | 4575 | ܁k | Yes | 17 | ܁. |
| 9 | 1.1.2 | **Analysis Task - 02. Statement of Work (SOW)** | 3.38d | 2016-12-22 11:00 A | 2016-12-27 15:00 |  | 96% | 0.12d | 2016-12-22 11:00 | 2016-12-27 15:00 | 3.38d |  |  | 0d |  |  | 27h | 26h | 486 | 486 | 468 | 4576 | ܁q | Yes |  |  |
| 10 | 1.1.2.1 | Analysis Task - 02.01 Statement of Work (SOW) - Project Update | 0.12d | 2016-12-22 11:00 A | 2016-12-22 12:00 A | 8 | 100% |  | 2016-12-22 11:00 | 2016-12-22 12:00 | 0.12d | 2016-12-04 00:00 | 2016-12-12 00:00 |  | start no earlier than 2016-12-18 13:04 | ken.netherland | 1h | 1h | 18 | 18 | 18 | 4577 | ܁a | Yes | 13 | ܁$ |
| 11 | 1.1.2.2 | Analysis Task - 02.02 Statement of Work (SOW) - Executive Summary to Goals-Objectives | 1.12d | 2016-12-22 13:00 A | 2016-12-23 14:00 A | 10 | 100% |  | 2016-12-22 13:00 | 2016-12-23 14:00 | 1.12d | 2016-12-04 00:00 | 2016-12-12 00:00 |  | start no earlier than 2016-12-18 13:04 | ken.netherland | 9h | 9h | 162 | 162 | 162 | 4578 | ܁a | Yes | 14 |  |
| 12 | 1.1.2.3 | Analysis Task - 02.03 Statement of Work (SOW) - Cost-Benefit Assessment to Assumptions | 0.88d | 2016-12-23 14:00 A | 2016-12-26 12:00 A | 11 | 100% |  | 2016-12-23 14:00 | 2016-12-26 12:00 | 0.88d | 2016-12-04 00:00 | 2016-12-12 00:00 |  | start no earlier than 2016-12-18 13:04 | ken.netherland | 7h | 7h | 126 | 126 | 126 | 4579 | ܁a | Yes | 15 |  |
| 13 | 1.1.2.4 | Analysis Task - 02.04 Statement of Work (SOW) - Project Organization to Communication Plan | 1d | 2016-12-26 13:00 A | 2016-12-27 12:00 A | 12 | 100% |  | 2016-12-26 13:00 | 2016-12-27 12:00 | 1d | 2016-12-04 00:00 | 2016-12-12 00:00 |  | start no earlier than 2016-12-18 13:04 | ken.netherland | 8h | 8h | 144 | 144 | 144 | 4580 | ܁a | Yes | 14 | ܁; |
| 14 | 1.1.2.5 | Analysis Task - 02.05 Statement of Work (SOW) - Document | 0.25d | 2016-12-27 13:00 A | 2016-12-27 15:00 | 13 | 50% | 0.12d | 2016-12-27 13:00 | 2016-12-27 15:00 | 0.25d | 2016-12-04 00:00 | 2016-12-12 00:00 | 0d | start no earlier than 2016-12-18 12:59 | ken.netherland | 2h | 1h | 36 | 36 | 18 | 4581 | ܁a | Yes | 11 |  |
| 15 | 1.1.3 | **Analysis Task - 03. Business Requirements (BR)** | 9.62d | 2016-12-27 15:00 | 2017-01-10 11:00 |  |  |  | 2016-12-27 15:00 | 2017-01-10 11:00 | 9.62d |  |  | 0d |  |  | 77h |  | 1,386 | 1,386 |  | 4582 | ܁q | Yes |  |  |
| 16 | 1.1.3.1 | Analysis Task - 03.01 Business Requirements (BR) - Project Update | 0.12d | 2016-12-27 15:00 | 2016-12-27 16:00 | 14 |  |  | 2016-12-27 15:00 | 2016-12-27 16:00 | 0.12d | 2016-12-19 00:00 | 2016-12-19 00:00 | 0d | start no earlier than 2016-12-18 08:00 | ken.netherland | 1h |  | 18 | 18 |  | 4583 | ܁q | Yes | 12 | ܁6 |
| 17 | 1.1.3.2 | Analysis Task - 03.02 Business Requirements (BR) - Introduction to Business Requester | 0.38d | 2016-12-27 16:00 | 2016-12-28 10:00 | 16 |  |  | 2016-12-27 16:00 | 2016-12-28 10:00 | 0.38d | 2016-12-19 00:00 | 2016-12-19 00:00 | 0d |  | ken.netherland | 3h |  | 54 | 54 |  | 4584 | ܁q | Yes | 12 | ܁G |
| 18 | 1.1.3.3 | Analysis Task - 03.03 Business Requirements (BR) - As-Is to To-Be | 1.12d | 2016-12-28 10:00 | 2016-12-29 11:00 | 17 |  |  | 2016-12-28 10:00 | 2016-12-29 11:00 | 1.12d | 2016-12-19 00:00 | 2016-12-20 00:00 | 0d |  | ken.netherland | 9h |  | 162 | 162 |  | 4585 | ܁q | Yes | 12 | ܁) |
| 19 | 1.1.3.4 | Analysis Task - 03.04 Business Requirements (BR) - Customer to Ease of Use | 1d | 2016-12-29 11:00 | 2016-12-30 11:00 | 18 |  |  | 2016-12-29 11:00 | 2016-12-30 11:00 | 1d | 2016-12-20 00:00 | 2016-12-21 00:00 | 0d |  | ken.netherland | 8h |  | 144 | 144 |  | 4586 | ܁q | Yes | 11 | ܁F |
| 20 | 1.1.3.5 | Analysis Task - 03.05 Business Requirements (BR) - Use Case Detail | 0.75d | 2016-12-30 11:00 | 2017-01-02 09:00 | 19 |  |  | 2016-12-30 11:00 | 2017-01-02 09:00 | 0.75d | 2016-12-21 00:00 | 2016-12-22 00:00 | 0d |  | ken.netherland | 6h |  | 108 | 108 |  | 4587 | ܁q | Yes | 12 |  |
| 21 | 1.1.3.6 | Analysis Task - 03.06 Business Requirements (BR) - Use Case Requirements | 2.25d | 2017-01-02 09:00 | 2017-01-04 11:00 | 20 |  |  | 2017-01-02 09:00 | 2017-01-04 11:00 | 2.25d | 2016-12-22 00:00 | 2016-12-26 00:00 | 0d |  | ken.netherland | 18h |  | 324 | 324 |  | 4588 | ܁q | Yes | 12 |  |
| 22 | 1.1.3.7 | Analysis Task - 03.07 Business Requirements (BR) - External Interfaces to Glossary | 1d | 2017-01-04 11:00 | 2017-01-05 11:00 | 21 |  |  | 2017-01-04 11:00 | 2017-01-05 11:00 | 1d | 2016-12-26 00:00 | 2016-12-27 00:00 | 0d |  | ken.netherland | 8h |  | 144 | 144 |  | 4589 | ܁q | Yes | 11 |  |
| 23 | 1.1.3.8 | Analysis Task - 03.08 Business Requirements (BR) - Requirements Review Meeting Prep | 1d | 2017-01-05 11:00 | 2017-01-06 11:00 | 22 |  |  | 2017-01-05 11:00 | 2017-01-06 11:00 | 1d | 2016-12-27 00:00 | 2016-12-29 00:00 | 0d |  | ken.netherland | 8h |  | 144 | 144 |  | 4590 | ܁q | Yes | 11 |  |
| 24 | 1.1.3.9 | Analysis Task - 03.09 Business Requirements (BR) - Requirements Review Meeting | 1d | 2017-01-06 11:00 | 2017-01-09 11:00 | 23 |  |  | 2017-01-06 11:00 | 2017-01-09 11:00 | 1d | 2016-12-28 00:00 | 2016-12-29 00:00 | 0d |  | ken.netherland | 8h |  | 144 | 144 |  | 4591 | ܁q | Yes | 11 | ܁8 |
| 25 | 1.1.3.10 | Analysis Task - 03.10 Business Requirements (BR) - Document | 1d | 2017-01-09 11:00 | 2017-01-10 11:00 | 24 |  |  | 2017-01-09 11:00 | 2017-01-10 11:00 | 1d | 2016-12-30 00:00 | 2016-12-30 00:00 | 0d |  | ken.netherland | 8h |  | 144 | 144 |  | 4592 | ܁q | Yes | 11 | ܁= |

| ID | WBS | Task | Type | Duration | Start | Finish | Predecessors | Baseline start | Baseline finish | Baseline duration | Baseline 1 start | Baseline 1 finish | Total slack | Free slack | Constraint | Resources | Work | Cost | Baseline cost | Work Item ID | Work Item Type | State | Links & Attachments | Rev |
| --- | --- | --- | --- | --- | --- | --- | --- | --- | --- | --- | --- | --- | --- | --- | --- | --- | --- | --- | --- | --- | --- | --- | --- | --- |
| 26 | 1.1.4 | **Analysis Task - 04. Functional Specification (FS)** |  | 8.25d | 2017-01-10 11:00 | 2017-01-20 14:00 |  | 2017-01-10 11:00 | 2017-01-20 14:00 | 8.25d |  |  | 0d |  |  |  | 66h | 1,188 | 1,188 | 4593 | ܁ | ܁q | Yes |  |
| 27 | 1.1.4.1 | Analysis Task - 04.01 Functional Specification (FS) - Project Update |  | 0.12d | 2017-01-10 11:00 | 2017-01-10 12:00 | 25 | 2017-01-10 11:00 | 2017-01-10 12:00 | 0.12d | 2016-12-23 11:00 | 2016-12-23 12:00 | 0d |  |  | mike.pearl | 1h | 18 | 18 | 4594 | ܁H | ܁q | Yes | 10 |
| 28 | 1.1.4.2 | Analysis Task - 04.02 Functional Specification (FS) - Introduction to Functional Map |  | 0.12d | 2017-01-10 13:00 | 2017-01-10 14:00 | 27 | 2017-01-10 13:00 | 2017-01-10 14:00 | 0.12d | 2016-01-02 00:00 | 2016-01-02 00:00 | 0.25d | 0d |  | ken.netherland | 1h | 18 | 18 | 4595 | ܁# | ܁q | Yes | 12 |
| 29 | 1.1.4.3 | Analysis Task - 04.03 Functional Specification (FS) - Business Use Cases to Business Use Case Summary |  | 2.5d | 2017-01-10 14:00 | 2017-01-13 09:00 | 28 | 2017-01-10 14:00 | 2017-01-13 09:00 | 2.5d | 2016-01-02 00:00 | 2016-01-04 00:00 | 0.25d | 0d |  | ken.netherland | 20h | 360 | 360 | 4596 | ܁7 | ܁q | Yes | 12 |
| 30 | 1.1.4.4 | Analysis Task - 04.04 Functional Specification (FS) - Individual Business Use Cases and User Interface Screens |  | 2d | 2017-01-13 09:00 | 2017-01-17 09:00 | 29 | 2017-01-13 09:00 | 2017-01-17 09:00 | 2d | 2016-01-04 00:00 | 2016-01-06 00:00 | 0.25d | 0d |  | ken.netherland | 16h | 288 | 288 | 4597 |  | ܁q | Yes | 12 |
| 31 | 1.1.4.5 | Analysis Task - 04.05 Functional Specification (FS) - Sytem Requirements to Feature Cuts-Unsupported Scenarios |  | 0.5d | 2017-01-17 09:00 | 2017-01-17 14:00 | 30 | 2017-01-17 09:00 | 2017-01-17 14:00 | 0.5d | 2016-01-06 00:00 | 2016-01-09 00:00 | 0.25d | 0d |  | ken.netherland | 4h | 72 | 72 | 4598 | ܁< | ܁q | Yes | 12 |
| 32 | 1.1.4.6 | Analysis Task - 04.06 Functional Specification (FS) - Functional Review Meeting Prep |  | 1d | 2017-01-17 14:00 | 2017-01-18 14:00 | 31 | 2017-01-17 14:00 | 2017-01-18 14:00 | 1d | 2016-01-09 00:00 | 2016-01-10 00:00 | 0.25d | 0d |  | ken.netherland | 8h | 144 | 144 | 4599 | ܁0 | ܁q | Yes | 11 |
| 33 | 1.1.4.7 | Analysis Task - 04.07 Functional Specification (FS) - Functional Review Meeting |  | 1d | 2017-01-18 14:00 | 2017-01-19 14:00 | 32 | 2017-01-18 14:00 | 2017-01-19 14:00 | 1d | 2017-01-10 00:00 | 2016-01-11 00:00 | 0.25d | 0d |  | ken.netherland | 8h | 144 | 144 | 4600 | ܁' | ܁q | Yes | 11 |
| 34 | 1.1.4.8 | Analysis Task - 04.08 Functional Specification (FS) - Document |  | 1d | 2017-01-19 14:00 | 2017-01-20 14:00 | 33 | 2017-01-19 14:00 | 2017-01-20 14:00 | 1d | 2017-01-11 00:00 | 2016-01-12 00:00 | 0.25d | 0d |  | ken.netherland | 8h | 144 | 144 | 4601 | ܁> | ܁q | Yes | 11 |
| 35 | 1.1.5 | **Analysis Task - 05. Test Plan (TP)** |  | 303.25d | 2017-01-23 08:00 | 2018-03-22 10:00 |  | 2017-01-23 08:00 | 2017-04-06 10:00 | 53.25d |  |  | 0.25d |  |  |  | 54h | 972 | 972 | 4602 |  | ܁q | Yes |  |
| 36 | 1.1.5.1 | Analysis Task - 05.01 Test Plan (TP) - Project Update |  | 0.12d | 2017-01-23 08:00 | 2017-01-23 09:00 | 34 | 2017-01-23 08:00 | 2017-01-23 09:00 | 0.12d | 2017-01-05 08:00 | 2017-01-05 09:00 | 0.25d | 0d |  | mike.pearl | 1h | 18 | 18 | 4603 | ܁% | ܁q | Yes | 11 |
| 37 | 1.1.5.2 | Analysis Task - 05.02 Test Plan (TP) - Test Map |  | 1.25d | 2017-01-23 09:00 | 2017-01-25 11:00 | 36 | 2017-01-23 09:00 | 2017-01-25 11:00 | 1.25d | 2016-12-01 08:00 | 2016-12-05 10:00 | 0.25d | 0d |  | mike.pearl | 10h | 180 | 180 | 4604 | ܁5 | ܁q | Yes | 10 |
| 38 | 1.1.5.3 | Analysis Task - 05.03 Test Plan (TP) - Test Cases |  | 5d | 2017-01-25 11:00 | 2017-04-05 11:00 | 37 | 2017-01-25 11:00 | 2017-04-05 11:00 | 5d | 2016-12-05 10:00 | 2016-12-19 10:00 | 0.75d | 0d |  | mike.pearl | 40h | 720 | 720 | 4605 | ܁3 | ܁q | Yes | 10 |
| 39 | 1.1.5.4 | Analysis Task - 05.04 Test Plan (TP) - Test Review Meeting Prep |  | 0.12d | 2017-04-05 11:00 | 2017-04-05 12:00 | 38 | 2017-04-05 11:00 | 2017-04-05 12:00 | 0.12d | 2016-12-19 10:00 | 2016-12-19 11:00 | 0.75d | 0.5d |  | mike.pearl | 1h | 18 | 18 | 4606 | ܁4 | ܁q | Yes | 10 |
| 40 | 1.1.5.5 | Analysis Task - 05.05 Test Plan (TP) - Test Review Meeting |  | 0.12d | 2018-03-22 08:00 | 2018-03-22 09:00 | 39 | 2017-04-06 08:00 | 2017-04-06 09:00 | 0.12d | 2016-12-19 11:00 | 2016-12-19 12:00 | 0.25d | 0d |  | mike.pearl | 1h | 18 | 18 | 4607 |  | ܁q | Yes | 10 |
| 41 | 1.1.5.6 | Analysis Task - 05.06 Test Plan (TP) - Test Plan Document |  | 0.12d | 2018-03-22 09:00 | 2018-03-22 10:00 | 40 | 2017-04-06 09:00 | 2017-04-06 10:00 | 0.12d | 2016-12-20 08:00 | 2016-12-20 09:00 | 0.25d |  |  | mike.pearl | 1h | 18 | 18 | 4608 | ܁ | ܁q | Yes | 10 |
| 42 | 1.2 | **Architecture** |  | 303.5d? | 2017-01-20 14:00 | 2018-03-22 09:00 |  | 2017-01-20 14:00 | 2017-04-06 11:00 | 53.75d? |  |  | 0.25d |  |  |  | 316h | 5,688 | 5,688 | 4568 |  | ܁q | Yes |  |
| 43 | 1.2.1 | **Architecture Task - 06. Design Specification (DS)** |  | 303.5d? | 2017-01-20 14:00 | 2018-03-22 09:00 |  | 2017-01-20 14:00 | 2017-04-06 11:00 | 53.75d? |  |  | 0.25d |  |  |  | 316h | 5,688 | 5,688 | 4609 | ܁C | ܁q | Yes |  |
| 44 | 1.2.1.1 | Architecture Task - 06.01 Design Specification (DS) - Project Update |  | 0.12d? | 2018-03-22 08:00 | 2018-03-22 09:00 | 34 | 2017-04-06 10:00 | 2017-04-06 11:00 | 0.12d? | 2017-01-05 08:00 | 2017-01-05 09:00 | 0.38d |  |  | mike.pearl | 1h | 18 | 18 | 4610 |  | ܁q | Yes | 12 |
| 45 | 1.2.1.2 | Architecture Task - 06.02 Design Specification (DS) - Logical Model |  | 0.12d? | 2017-01-20 14:00 | 2017-01-20 15:00 | 34 | 2017-01-20 14:00 | 2017-01-20 15:00 | 0.12d? | 2017-01-12 00:00 | 2017-01-04 15:00 | 0.25d | 0d |  | ken.netherland | 1h | 18 | 18 | 4611 |  | ܁q | Yes | 12 |
| 46 | 1.2.1.3 | Architecture Task - 06.03 Design Specification (DS) - Work Breakdown Structure Diagram |  | 5d? | 2017-01-20 15:00 | 2017-01-27 15:00 | 45 | 2017-01-20 15:00 | 2017-01-27 15:00 | 5d? | 2017-01-12 00:00 | 2017-01-19 00:00 | 0.25d | 0d |  | ken.netherland | 40h | 720 | 720 | 4612 | ܁9 | ܁q | Yes | 12 |
| 47 | 1.2.1.4 | Architecture Task - 06.04 Design Specification (DS) - WBS Dictionary - Ken |  | 6.25d? | 2017-01-27 15:00 | 2017-02-06 17:00 | 46 | 2017-01-27 15:00 | 2017-02-06 17:00 | 6.25d? | 2017-01-19 00:00 | 2017-01-27 00:00 | 18.5d |  |  | ken.netherland | 50h | 900 | 900 | 4613 | ܁- | ܁q | Yes | 12 |
| 48 | 1.2.1.5 | Architecture Task - 06.04 Design Specification (DS) - WBS Dictionary - Mike |  | 12.5d? | 2017-01-30 08:00 | 2017-03-03 12:00 | 46 | 2017-01-30 08:00 | 2017-03-03 12:00 | 12.5d? | 2017-01-12 08:00 | 2017-02-15 12:00 | 0d |  |  | mike.pearl | 100h | 1,800 | 1,800 | 4970 | ܁- | ܁q | Yes |  |
| 49 | 1.2.1.6 | Architecture Task - 06.05 Design Specification (DS) - Task Network Diagram |  | 2.5d? | 2017-03-03 13:00 | 2017-03-07 17:00 | 47, 48 | 2017-03-03 13:00 | 2017-03-07 17:00 | 2.5d? | 2017-02-23 00:00 | 2017-02-27 00:00 | 0d |  |  | ken.netherland | 20h | 360 | 360 | 4614 | ܁A | ܁q | Yes | 12 |
| 50 | 1.2.1.7 | Architecture Task - 06.06 Design Specification (DS) - Static Structure Diagram |  | 2.5d? | 2017-03-08 08:00 | 2017-03-10 12:00 | 49 | 2017-03-08 08:00 | 2017-03-10 12:00 | 2.5d? | 2017-02-27 00:00 | 2017-03-12 00:00 | 0d |  |  | ken.netherland | 20h | 360 | 360 | 4615 | ܁( | ܁q | Yes | 12 |
| 51 | 1.2.1.8 | Architecture Task - 06.07 Design Specification (DS) - Entity Relationship Diagram |  | 2.5d? | 2017-03-10 13:00 | 2017-03-14 17:00 | 50 | 2017-03-10 13:00 | 2017-03-14 17:00 | 2.5d? | 2017-03-02 00:00 | 2017-03-06 00:00 | 0d |  |  | ken.netherland | 20h | 360 | 360 | 4616 |  | ܁q | Yes | 12 |
| 52 | 1.2.1.9 | Architecture Task - 06.08 Design Specification (DS) - Code Design |  | 2.5d? | 2017-03-15 08:00 | 2017-03-21 12:00 | 51 | 2017-03-15 08:00 | 2017-03-21 12:00 | 2.5d? | 2017-02-27 08:00 | 2017-03-03 12:00 | 0d |  |  | mike.pearl | 20h | 360 | 360 | 4617 |  | ܁q | Yes | 11 |
| 53 | 1.2.1.10 | Architecture Task - 06.09 Design Specification (DS) - Integration Tests Design |  | 2.5d? | 2017-03-22 08:00 | 2017-03-28 12:00 | 52 | 2017-03-22 08:00 | 2017-03-28 12:00 | 2.5d? | 2017-03-06 08:00 | 2017-03-10 12:00 | 0d |  |  | mike.pearl | 20h | 360 | 360 | 4618 |  | ܁q | Yes | 11 |
| 54 | 1.2.1.11 | Architecture Task - 06.10 Design Specification (DS) - Unit Tests Design |  | 2.5d? | 2017-03-29 08:00 | 2017-04-04 12:00 | 53 | 2017-03-29 08:00 | 2017-04-04 12:00 | 2.5d? | 2017-03-13 08:00 | 2017-03-17 12:00 | 0d |  |  | mike.pearl | 20h | 360 | 360 | 4619 | ܁E | ܁q | Yes | 11 |
| 55 | 1.2.1.12 | Architecture Task - 06.12 Design Specification (DS) - Design Review Meeting Prep |  | 0.12d? | 2017-04-04 14:00 | 2017-04-04 15:00 | 56 | 2017-04-04 14:00 | 2017-04-04 15:00 | 0.12d? | 2017-03-27 00:00 | 2017-03-27 00:00 | 0d |  |  | ken.netherland | 1h | 18 | 18 | 4620 |  | ܁q | Yes | 13 |
| 56 | 1.2.1.13 | Architecture Task - 06.11 Design Specification (DS) - Design Review Meeting |  | 0.12d? | 2017-04-04 13:00 | 2017-04-04 14:00 | 54 | 2017-04-04 13:00 | 2017-04-04 14:00 | 0.12d? | 2017-03-27 00:00 | 2017-03-27 00:00 | 0d |  |  | ken.netherland | 1h | 18 | 18 | 4621 | ܁? | ܁q | Yes | 14 |
| 57 | 1.2.1.14 | Architecture Task - 06.13 Design Specification (DS) - Document |  | 0.12d? | 2017-04-04 15:00 | 2017-04-04 16:00 | 55 | 2017-04-04 15:00 | 2017-04-04 16:00 | 0.12d? | 2017-03-27 00:00 | 2017-03-27 00:00 | 0d |  |  | ken.netherland | 1h | 18 | 18 | 4622 |  | ܁q | Yes | 13 |
| 58 | 1.2.1.15 | Architecture Task - 06.14 Design Specification (DS) - Development Kickoff |  | 0.12d? | 2017-04-04 16:00 | 2017-04-04 17:00 | 57 | 2017-04-04 16:00 | 2017-04-04 17:00 | 0.12d? | 2017-03-28 00:00 | 2017-03-28 00:00 | 0d |  |  | ken.netherland | 1h | 18 | 18 | 4623 | ܁" | ܁q | Yes | 13 |
| 59 | 1.2.2 | Completion of Analysis and Design | milestone | 1d? | 2017-04-05 08:00 | 2017-04-05 17:00 | 58 | 2017-04-05 08:00 | 2017-04-05 17:00 | 1d? | 2017-03-20 08:00 | 2017-03-20 17:00 | 0d |  | start no earlier than 2017-02-14 08:00 |  |  |  |  |  |  |  |  |  |

| ID | WBS | Task | Type | Duration | Start | Finish | Predecessors | Baseline start | Baseline finish | Baseline duration | Baseline 1 start | Baseline 1 finish | Total slack | Constraint | Resources | Work | Cost | Baseline cost | Work Item ID | Work Item Type | State | Links & Attachments |
| --- | --- | --- | --- | --- | --- | --- | --- | --- | --- | --- | --- | --- | --- | --- | --- | --- | --- | --- | --- | --- | --- | --- |
| 60 | 1.3 | **Deployment Task - 09. Deployment** |  | 251d? | 2017-04-06 08:00 | 2018-03-22 17:00 |  | 2017-04-06 08:00 | 2018-03-22 11:00 | 250.38d? |  |  | 0d |  |  | 3000h | 54,000 | 54,000 | 4624 | ܁1 | ܁q | Yes |
| 61 | 1.3.1 | **Development and QA** |  | 250d? | 2017-04-06 08:00 | 2018-03-21 17:00 |  | 2017-04-06 08:00 | 2018-03-22 11:00 | 250.38d? |  |  | 0d |  |  | 3000h | 54,000 | 54,000 | 4569 |  | ܁q | Yes |
| 62 | 1.3.1.1 | Ken |  | 250d? | 2017-04-06 08:00 | 2018-03-21 17:00 | 59 | 2017-04-06 08:00 | 2018-03-21 17:00 | 250d? |  |  | 0d |  | ken.netherland | 2000h | 36,000 | 36,000 | 5159 |  | ܁q | No |
| 63 | 1.3.1.2 | Mike |  | 125d? | 2017-04-06 08:00 | 2018-03-21 12:00 | 59 | 2017-04-06 11:00 | 2018-03-22 11:00 | 125d? |  |  | 0d |  | mike.pearl | 1000h | 18,000 | 18,000 | 5160 |  | ܁q | No |
| 64 | 1.3.2 | Completion of Development and QA | milestone | 1d | 2018-03-22 08:00 | 2018-03-22 17:00 | 62, 63 | 2018-03-22 11:00 | 2018-03-23 11:00 | 1d | 2018-01-01 08:00 | 2018-01-01 17:00 | 0d | start no earlier than 2017-12-31 08:00 |  |  |  |  |  |  |  |  |
